Schedule from MS Project, 2023-09-12 to 2024-01-02, costs in BHD, A marks actual dates.

## Calendars

- Standard: Mon-Fri 08:00-12:00, 13:00-17:00; Sat-Sun off. Exceptions (off unless hours are given): 2023-09-16 08:00-12:00, 13:00-17:00, 2023-09-23 08:00-12:00, 13:00-17:00, 2023-10-01 08:00-12:00, 13:00-17:00, 2023-10-07 08:00-12:00, 13:00-17:00, 2023-10-14 to 2023-10-15 08:00-12:00, 13:00-17:00, 2023-11-11 to 2023-11-12 08:00-12:00, 13:00-17:00, 2023-11-18 to 2023-11-19 08:00-12:00, 13:00-17:00, 2023-11-25 08:00-12:00, 13:00-17:00, 2023-12-09 to 2023-12-10 08:00-12:00, 13:00-17:00, 2023-12-16 to 2023-12-17 08:00-12:00, 13:00-17:00, 2023-12-23 08:00-12:00, 13:00-17:00.

## Resources

| Resource | Rate | Cost per use |
| --- | --- | --- |
| Project Analyst | 10 |  |
| Project Manager | 20 |  |
| Designer | 10 |  |
| Database Architect | 20 |  |
| Programmer | 15 |  |
| Tester | 10 |  |
| Technical writer | 10 |  |
| Programming Framework (Django) |  | 2000 |
| Hosting server (Azure) |  | 1000 |
| Frontend Framework |  | 2500 |
| MongoDB |  | 2700 |

## Schedule

| ID | WBS | Task | Type | Duration | Start | Finish | Predecessors | Complete | Remaining | Baseline start | Baseline finish | Baseline duration | Total slack | Constraint | Resources | Work | Actual work | Cost | Baseline cost | Actual cost |
| --- | --- | --- | --- | --- | --- | --- | --- | --- | --- | --- | --- | --- | --- | --- | --- | --- | --- | --- | --- | --- |
| 1 | 1 | **Academic Advising Platform** |  | 96.38d | 2023-09-12 A | 2024-01-02 |  | 72% | 26.73d | 2023-09-12 | 2024-01-02 | 96.38d | 0d |  |  | 1421h | 1149h | 22,710 | 22,710 | 19,230 |
| 2 | 1.1 | **Project Initiation and preperation** |  | 1.68w | 2023-09-12 A | 2023-09-22 A |  | 100% |  | 2023-09-12 | 2023-09-22 | 1.68w |  |  | Project Manager; Project Analyst | 286h | 286h | 4,310 | 4,310 | 4,310 |
| 3 | 1.1.1 | **Client Overview** |  | 2.38d | 2023-09-12 A | 2023-09-14 A |  | 100% |  | 2023-09-12 | 2023-09-14 | 2.38d |  |  | Project Manager; Project Analyst | 76h | 76h | 1,140 | 1,140 | 1,140 |
| 4 | 1.1.1.1 | Conduct stakeholder analysis |  | 3h | 2023-09-12 A | 2023-09-12 A |  | 100% |  | 2023-09-12 | 2023-09-12 | 3h |  | finish no earlier than 2023-09-12 | Project Manager; Project Analyst | 6h | 6h | 90 | 90 | 90 |
| 5 | 1.1.1.2 | Identify client and system background |  | 1d | 2023-09-13 A | 2023-09-13 A | 4 | 100% |  | 2023-09-13 | 2023-09-13 | 1d |  | start no earlier than 2023-09-13 | Project Manager; Project Analyst | 16h | 16h | 240 | 240 | 240 |
| 6 | 1.1.1.3 | Identify policies |  | 1d | 2023-09-14 A | 2023-09-14 A | 5 | 100% |  | 2023-09-14 | 2023-09-14 | 1d |  | finish no earlier than 2023-09-14 | Project Manager; Project Analyst | 16h | 16h | 240 | 240 | 240 |
| 7 | 1.1.2 | **Doccument General Information** |  | 1.25d | 2023-09-15 A | 2023-09-16 A | 3 | 100% |  | 2023-09-15 | 2023-09-16 | 1.25d |  |  |  | 5h | 5h | 90 | 90 | 90 |
| 8 | 1.1.2.1 | Identify Purpose |  | 1h | 2023-09-15 A | 2023-09-15 A | 3 | 100% |  | 2023-09-15 | 2023-09-15 | 1h |  |  | Project Manager | 1h | 1h | 20 | 20 | 20 |
| 9 | 1.1.2.2 | Product Description |  | 1h | 2023-09-16 A | 2023-09-16 A | 8 | 100% |  | 2023-09-16 | 2023-09-16 | 1h |  |  | Project Manager | 1h | 1h | 20 | 20 | 20 |
| 10 | 1.1.2.3 | Identify project success criteria |  | 1h | 2023-09-16 A | 2023-09-16 A | 9 | 100% |  | 2023-09-16 | 2023-09-16 | 1h |  |  | Project Manager | 1h | 1h | 20 | 20 | 20 |
| 11 | 1.1.2.4 | Build schedule and budget summary |  | 1h | 2023-09-16 A | 2023-09-16 A | 10 | 100% |  | 2023-09-16 | 2023-09-16 | 1h |  |  | Project Manager; Project Analyst | 2h | 2h | 30 | 30 | 30 |
| 12 | 1.1.3 | **Project Context** |  | 0.5d | 2023-09-16 A | 2023-09-16 A | 7 | 100% |  | 2023-09-16 | 2023-09-16 | 0.5d |  |  |  | 7h | 7h | 110 | 110 | 110 |
| 13 | 1.1.3.1 | Identify buisness needs, problems, opportunity |  | 1h | 2023-09-16 A | 2023-09-16 A | 7 | 100% |  | 2023-09-16 | 2023-09-16 | 1h |  |  | Project Manager | 1h | 1h | 20 | 20 | 20 |
| 14 | 1.1.3.2 | Identify business assumptions |  | 1h | 2023-09-16 A | 2023-09-16 A | 13 | 100% |  | 2023-09-16 | 2023-09-16 | 1h |  |  | Project Manager; Project Analyst | 2h | 2h | 30 | 30 | 30 |
| 15 | 1.1.3.3 | Identify project constraints and risks |  | 2h | 2023-09-16 A | 2023-09-16 A | 14 | 100% |  | 2023-09-16 | 2023-09-16 | 2h |  |  | Project Manager; Project Analyst | 4h | 4h | 60 | 60 | 60 |
| 16 | 1.1.4 | **Determine possible project issues** |  | 4d | 2023-09-18 A | 2023-09-21 A | 12 | 100% |  | 2023-09-18 | 2023-09-21 | 4d |  |  |  | 64h | 64h | 960 | 960 | 960 |
| 17 | 1.1.4.1 | Determine legal issues |  | 1d | 2023-09-18 A | 2023-09-18 A | 12 | 100% |  | 2023-09-18 | 2023-09-18 | 1d |  | finish no earlier than 2023-09-18 | Project Manager; Project Analyst | 16h | 16h | 240 | 240 | 240 |
| 18 | 1.1.4.2 | Determine ethical issues |  | 1d | 2023-09-19 A | 2023-09-19 A | 17 | 100% |  | 2023-09-19 | 2023-09-19 | 1d |  |  | Project Manager; Project Analyst | 16h | 16h | 240 | 240 | 240 |
| 19 | 1.1.4.3 | Determine social issues |  | 1d | 2023-09-20 A | 2023-09-20 A | 18 | 100% |  | 2023-09-20 | 2023-09-20 | 1d |  |  | Project Manager; Project Analyst | 16h | 16h | 240 | 240 | 240 |
| 20 | 1.1.4.4 | Determine professional issues |  | 1d | 2023-09-21 A | 2023-09-21 A | 19 | 100% |  | 2023-09-21 | 2023-09-21 | 1d |  | finish no earlier than 2023-09-16 | Project Manager; Project Analyst | 16h | 16h | 240 | 240 | 240 |
| 21 | 1.1.5 | Project Charter | milestone | 0d | 2023-09-22 A | 2023-09-22 A |  | 100% |  | 2023-09-22 | 2023-09-22 | 0d |  |  | Project Manager |  |  |  |  |  |
| 22 | 1.2 | **Planning** |  | 14.12d | 2023-09-22 A | 2023-10-09 A | 2 | 100% |  | 2023-09-22 | 2023-10-09 | 14.12d |  |  | Project Manager | 239h | 239h | 4,400 | 4,400 | 4,400 |
| 23 | 1.2.1 | **Scope Management Plan** |  | 3d | 2023-09-22 A | 2023-09-26 A | 2 | 100% |  | 2023-09-22 | 2023-09-26 | 3d |  |  |  | 24h | 24h | 480 | 480 | 480 |
| 24 | 1.2.1.1 | Gather project requirements |  | 1d | 2023-09-22 A | 2023-09-22 A | 2 | 100% |  | 2023-09-22 | 2023-09-22 | 1d |  | finish no earlier than 2023-09-22 | Project Manager | 8h | 8h | 160 | 160 | 160 |
| 25 | 1.2.1.2 | Problem analysis- Ishikawa diagram |  | 2d | 2023-09-23 A | 2023-09-25 A | 24 | 100% |  | 2023-09-23 | 2023-09-25 | 2d |  | start no earlier than 2023-09-23 | Project Manager | 16h | 16h | 320 | 320 | 320 |
| 26 | 1.2.1.3 | Scope Plan | milestone, manual | 0d | 2023-09-26 A | 2023-09-26 A | 25 | 100% |  | 2023-09-26 | 2023-09-26 | 0d |  |  | Project Manager |  |  |  |  |  |

| ID | WBS | Task | Type | Duration | Start | Finish | Predecessors | Complete | Baseline start | Baseline finish | Baseline duration | Constraint | Resources | Work | Actual work | Cost | Baseline cost | Actual cost |
| --- | --- | --- | --- | --- | --- | --- | --- | --- | --- | --- | --- | --- | --- | --- | --- | --- | --- | --- |
| 27 | 1.2.2 | **Cost Management** |  | 1.25d | 2023-09-26 A | 2023-09-27 A | 23 | 100% | 2023-09-26 | 2023-09-27 | 1.25d |  |  | 20h | 20h | 300 | 300 | 300 |
| 28 | 1.2.2.1 | Identify costs |  | 1d | 2023-09-26 A | 2023-09-26 A | 23 | 100% | 2023-09-26 | 2023-09-26 | 1d |  | Project Manager; Project Analyst | 16h | 16h | 240 | 240 | 240 |
| 29 | 1.2.2.2 | Determine the budget |  | 2h | 2023-09-27 A | 2023-09-27 A | 28 | 100% | 2023-09-27 | 2023-09-27 | 2h |  | Project Manager; Project Analyst | 4h | 4h | 60 | 60 | 60 |
| 30 | 1.2.2.3 | Cost Managent Plan | milestone, manual | 0d | 2023-09-27 A | 2023-09-27 A | 29 | 100% | 2023-09-27 | 2023-09-27 | 0d |  | Project Manager; Project Analyst |  |  |  |  |  |
| 31 | 1.2.3 | **Feasibility Analysis** |  | 1d | 2023-09-28 A | 2023-09-29 A | 27 | 100% | 2023-09-28 | 2023-09-29 | 1d |  |  | 8h | 8h | 160 | 160 | 160 |
| 32 | 1.2.3.1 | Create COTS matrix analysis sheet |  | 1d | 2023-09-28 A | 2023-09-28 A | 27 | 100% | 2023-09-28 | 2023-09-28 | 1d | start no earlier than 2023-09-28 | Project Manager | 8h | 8h | 160 | 160 | 160 |
| 33 | 1.2.3.2 | Feasibility Analysis Report | milestone, manual | 0d | 2023-09-29 A | 2023-09-29 A | 32 | 100% | 2023-09-29 | 2023-09-29 | 0d |  | Project Manager |  |  |  |  |  |
| 34 | 1.2.4 | **Quality Management** |  | 2d | 2023-09-29 A | 2023-10-01 A | 31 | 100% | 2023-09-29 | 2023-10-01 | 2d |  |  | 32h | 32h | 480 | 480 | 480 |
| 35 | 1.2.4.1 | Build quality requirement matrix |  | 1d | 2023-09-29 A | 2023-09-29 A | 31 | 100% | 2023-09-29 | 2023-09-29 | 1d | start no earlier than 2023-09-28 | Project Analyst; Project Manager | 16h | 16h | 240 | 240 | 240 |
| 36 | 1.2.4.2 | Perform quality assurance test cases |  | 1d | 2023-10-01 A | 2023-10-01 A | 35 | 100% | 2023-10-01 | 2023-10-01 | 1d |  | Project Analyst; Project Manager | 16h | 16h | 240 | 240 | 240 |
| 37 | 1.2.4.3 | Quality Management Plan | milestone | 0d | 2023-10-01 A | 2023-10-01 A | 36 | 100% | 2023-10-01 | 2023-10-01 | 0d |  | Project Analyst; Project Manager |  |  |  |  |  |
| 38 | 1.2.5 | **Risk Management** |  | 1.88d | 2023-10-02 A | 2023-10-03 A | 34 | 100% | 2023-10-02 | 2023-10-03 | 1.88d |  |  | 21h | 21h | 300 | 300 | 300 |
| 39 | 1.2.5.1 | Plan risk management |  | 3h | 2023-10-02 A | 2023-10-02 A | 34 | 100% | 2023-10-02 | 2023-10-02 | 3h |  | Project Manager | 3h | 3h | 60 | 60 | 60 |
| 40 | 1.2.5.2 | Develop risk register report |  | 3h | 2023-10-02 A | 2023-10-02 A | 39 | 100% | 2023-10-02 | 2023-10-02 | 3h | start no earlier than 2023-09-29 | Project Analyst; Project Manager | 6h | 6h | 90 | 90 | 90 |
| 41 | 1.2.5.3 | Identify risks |  | 3h | 2023-10-02 A | 2023-10-03 A | 40 | 100% | 2023-10-02 | 2023-10-03 | 3h | start no earlier than 2023-09-29 | Project Analyst | 3h | 3h | 30 | 30 | 30 |
| 42 | 1.2.5.4 | Analyse risks |  | 3h | 2023-10-03 A | 2023-10-03 A | 41 | 100% | 2023-10-03 | 2023-10-03 | 3h | start no earlier than 2023-09-29 | Project Analyst | 3h | 3h | 30 | 30 | 30 |
| 43 | 1.2.5.5 | Plan risk responses |  | 3h | 2023-10-03 A | 2023-10-03 A | 42 | 100% | 2023-10-03 | 2023-10-03 | 3h | start no earlier than 2023-09-29 | Project Analyst; Project Manager | 6h | 6h | 90 | 90 | 90 |
| 44 | 1.2.5.6 | Risk Management Plan | milestone, manual | 0d | 2023-10-03 A | 2023-10-03 A | 43 | 100% | 2023-10-03 | 2023-10-03 | 0d |  | Project Manager |  |  |  |  |  |
| 45 | 1.2.6 | **Human Resource management** |  | 2d | 2023-10-03 A | 2023-10-05 A | 38 | 100% | 2023-10-03 | 2023-10-05 | 2d |  |  | 16h | 16h | 320 | 320 | 320 |
| 46 | 1.2.6.1 | Set roles and responsibilities |  | 1d | 2023-10-03 A | 2023-10-04 A | 38 | 100% | 2023-10-03 | 2023-10-04 | 1d |  | Project Manager | 8h | 8h | 160 | 160 | 160 |
| 47 | 1.2.6.2 | Create responsibility assignment matrix |  | 1d | 2023-10-04 A | 2023-10-05 A | 46 | 100% | 2023-10-04 | 2023-10-05 | 1d |  | Project Manager | 8h | 8h | 160 | 160 | 160 |
| 48 | 1.2.6.3 | Human Resources Management | milestone, manual | 0d | 2023-10-05 A | 2023-10-05 A | 47 | 100% | 2023-10-05 | 2023-10-05 | 0d |  | Project Manager |  |  |  |  |  |
| 49 | 1.2.7 | **Communication management** |  | 0.25d | 2023-10-05 A | 2023-10-06 A | 45 | 100% | 2023-10-05 | 2023-10-06 | 0.25d |  |  | 2h | 2h | 40 | 40 | 40 |
| 50 | 1.2.7.1 | Stakeholder communication analysis |  | 1h | 2023-10-05 A | 2023-10-05 A | 45 | 100% | 2023-10-05 | 2023-10-05 | 1h | start no earlier than 2023-10-05 | Project Manager | 1h | 1h | 20 | 20 | 20 |
| 51 | 1.2.7.2 | Stakeholders management strategy | manual | 1h | 2023-10-06 A | 2023-10-06 A | 50 | 100% | 2023-10-06 | 2023-10-06 | 1h |  | Project Manager | 1h | 1h | 20 | 20 | 20 |
| 52 | 1.2.7.3 | Communication plan | milestone | 0d | 2023-10-06 A | 2023-10-06 A | 51 | 100% | 2023-10-06 | 2023-10-06 | 0d |  | Project Manager |  |  |  |  |  |

| ID | WBS | Task | Type | Duration | Start | Finish | Predecessors | Complete | Remaining | Baseline start | Baseline finish | Baseline duration | Total slack | Constraint | Resources | Work | Actual work | Cost | Baseline cost | Actual cost |
| --- | --- | --- | --- | --- | --- | --- | --- | --- | --- | --- | --- | --- | --- | --- | --- | --- | --- | --- | --- | --- |
| 53 | 1.2.8 | **Schedule management** |  | 1d | 2023-10-07 A | 2023-10-08 A | 49 | 100% |  | 2023-10-07 | 2023-10-08 | 1d |  |  |  | 2h | 2h | 40 | 40 | 40 |
| 54 | 1.2.8.1 | Define tasks |  | 1h | 2023-10-07 A | 2023-10-07 A | 49 | 100% |  | 2023-10-07 | 2023-10-07 | 1h |  | start no earlier than 2023-10-07 | Project Manager | 1h | 1h | 20 | 20 | 20 |
| 55 | 1.2.8.2 | Define resources |  | 1h | 2023-10-07 A | 2023-10-07 A | 54 | 100% |  | 2023-10-07 | 2023-10-07 | 1h |  | start no earlier than 2023-10-07 | Project Manager | 1h | 1h | 20 | 20 | 20 |
| 56 | 1.2.8.3 | Schedule Management Plan | milestone | 0d | 2023-10-08 A | 2023-10-08 A | 55 | 100% |  | 2023-10-08 | 2023-10-08 | 0d |  |  | Project Manager |  |  |  |  |  |
| 57 | 1.2.9 | **Procurement management** |  | 0.12d | 2023-10-09 A | 2023-10-09 A | 53 | 100% |  | 2023-10-09 | 2023-10-09 | 0.12d |  |  |  | 1h | 1h | 20 | 20 | 20 |
| 58 | 1.2.9.1 | Conduct procurement management plan |  | 1h | 2023-10-09 A | 2023-10-09 A | 53 | 100% |  | 2023-10-09 | 2023-10-09 | 1h |  | start no earlier than 2023-10-08 | Project Manager | 1h | 1h | 20 | 20 | 20 |
| 59 | 1.2.9.2 | Finish procurement management | milestone | 0d | 2023-10-09 A | 2023-10-09 A | 58 | 100% |  | 2023-10-09 | 2023-10-09 | 0d |  | start no earlier than 2023-10-08 | Project Manager |  |  |  |  |  |
| 60 | 1.3 | **Execution** |  | 54d | 2023-10-11 A | 2023-12-13 | 22 | 87% | 7.13d | 2023-10-11 | 2023-12-13 | 54d | 0d |  |  | 728h | 624h | 11,920 | 11,920 | 10,520 |
| 61 | 1.3.1 | **Design** |  | 5d | 2023-10-11 A | 2023-10-16 A | 22 | 100% |  | 2023-10-11 | 2023-10-16 | 5d |  |  |  | 40h | 40h | 520 | 520 | 520 |
| 62 | 1.3.1.1 | Design the logo |  | 1d | 2023-10-11 A | 2023-10-11 A |  | 100% |  | 2023-10-11 | 2023-10-11 | 1d |  | start no earlier than 2023-10-11 | Designer | 8h | 8h | 80 | 80 | 80 |
| 63 | 1.3.1.2 | Design Use-case diagram |  | 1d | 2023-10-12 A | 2023-10-12 A | 62 | 100% |  | 2023-10-12 | 2023-10-12 | 1d |  | start no earlier than 2023-10-11 | Programmer; Project Analyst | 16h | 16h | 200 | 200 | 200 |
| 64 | 1.3.1.3 | Design entity relationship diagram |  | 1d | 2023-10-13 A | 2023-10-13 A | 63 | 100% |  | 2023-10-13 | 2023-10-13 | 1d |  | start no earlier than 2023-10-11 | Database Architect | 8h | 8h | 160 | 160 | 160 |
| 65 | 1.3.1.4 | Design web pages prototypes |  | 1d | 2023-10-14 A | 2023-10-14 A | 64 | 100% |  | 2023-10-14 | 2023-10-14 | 1d |  | start no earlier than 2023-10-11 | Designer | 8h | 8h | 80 | 80 | 80 |
| 66 | 1.3.1.5 | Finish Design | milestone, manual | 0d | 2023-10-16 A | 2023-10-16 A | 65 | 100% |  | 2023-10-16 | 2023-10-16 | 0d |  |  |  |  |  |  |  |  |
| 67 | 1.3.2 | **Implementation** |  | 49d | 2023-10-16 A | 2023-12-13 |  | 86% | 7d | 2023-10-16 | 2023-12-13 | 49d | 0d |  |  | 688h | 584h | 11,400 | 11,400 | 10,000 |
| 68 | 1.3.2.1 | **Backend Development** |  | 6d | 2023-10-16 A | 2023-10-24 | 61 | 83% | 1d | 2023-10-16 | 2023-10-24 | 6d | 43d |  |  | 64h | 56h | 1,040 | 1,040 | 920 |
| 69 | 1.3.2.1.1 | Develop database schema |  | 2d | 2023-10-16 A | 2023-10-17 A | 61 | 100% |  | 2023-10-16 | 2023-10-17 | 2d |  | start no earlier than 2023-10-16 | Programmer; Database Architect | 32h | 32h | 560 | 560 | 560 |
| 70 | 1.3.2.1.2 | Implement data models and relationships |  | 2d | 2023-10-18 A | 2023-10-19 A | 69 | 100% |  | 2023-10-18 | 2023-10-19 | 2d |  | start no earlier than 2023-10-16 | Programmer | 16h | 16h | 240 | 240 | 240 |
| 71 | 1.3.2.1.3 | Design and implement application logic |  | 2d | 2023-10-20 A | 2023-10-23 | 70 | 50% | 1d | 2023-10-20 | 2023-10-23 | 2d | 43d | finish no earlier than 2023-10-20 | Programmer | 16h | 8h | 240 | 240 | 120 |
| 72 | 1.3.2.1.4 | Finish Backend Development | milestone, manual | 0d | 2023-10-24 A | 2023-10-24 A | 71 | 100% |  | 2023-10-24 | 2023-10-24 | 0d |  |  | Database Architect; Programmer |  |  |  |  |  |
| 73 | 1.3.2.2 | **Develop essential pages** |  | 6d | 2023-10-24 A | 2023-11-01 A | 68 | 100% |  | 2023-10-24 | 2023-11-01 | 6d |  |  |  | 48h | 48h | 720 | 720 | 720 |
| 74 | 1.3.2.2.1 | Programmes pages |  | 3d | 2023-10-24 A | 2023-10-26 A | 68 | 100% |  | 2023-10-24 | 2023-10-26 | 3d |  | start no earlier than 2023-10-23 | Programmer | 24h | 24h | 360 | 360 | 360 |
| 75 | 1.3.2.2.2 | Major pages |  | 1d | 2023-10-27 A | 2023-10-27 A | 74 | 100% |  | 2023-10-27 | 2023-10-27 | 1d |  | start no earlier than 2023-10-12 | Programmer | 8h | 8h | 120 | 120 | 120 |
| 76 | 1.3.2.2.3 | Courses pages |  | 1d | 2023-10-30 A | 2023-10-30 A | 75 | 100% |  | 2023-10-30 | 2023-10-30 | 1d |  | start no earlier than 2023-10-23 | Programmer | 8h | 8h | 120 | 120 | 120 |
| 77 | 1.3.2.2.4 | Student major selection feature |  | 1d | 2023-10-31 A | 2023-10-31 A | 76 | 100% |  | 2023-10-31 | 2023-10-31 | 1d |  | start no earlier than 2023-10-23 | Programmer | 8h | 8h | 120 | 120 | 120 |
| 78 | 1.3.2.2.5 | Finish Pages | milestone, manual | 0d | 2023-11-01 A | 2023-11-01 A | 77 | 100% |  | 2023-11-01 | 2023-11-01 | 0d |  |  | Programmer |  |  |  |  |  |

| ID | WBS | Task | Type | Duration | Start | Finish | Predecessors | Complete | Remaining | Baseline start | Baseline finish | Baseline duration | Total slack | Constraint | Resources | Work | Actual work | Cost | Baseline cost | Actual cost |
| --- | --- | --- | --- | --- | --- | --- | --- | --- | --- | --- | --- | --- | --- | --- | --- | --- | --- | --- | --- | --- |
| 79 | 1.3.2.3 | **Develop features** |  | 5d | 2023-11-01 A | 2023-11-07 A | 73 | 100% |  | 2023-11-01 | 2023-11-07 | 5d |  |  |  | 80h | 80h | 1,400 | 1,400 | 1,400 |
| 80 | 1.3.2.3.1 | Login and Registration |  | 3d | 2023-11-01 A | 2023-11-03 A | 73 | 100% |  | 2023-11-01 | 2023-11-03 | 3d |  | start no earlier than 2023-10-31 | Database Architect; Programmer | 48h | 48h | 840 | 840 | 840 |
| 81 | 1.3.2.3.2 | Role-based authentication |  | 2d | 2023-11-06 A | 2023-11-07 A | 80 | 100% |  | 2023-11-06 | 2023-11-07 | 2d |  | start no earlier than 2023-11-02 | Database Architect; Programmer | 32h | 32h | 560 | 560 | 560 |
| 82 | 1.3.2.4 | **Develop User Panels** |  | 5.4w | 2023-11-08 A | 2023-12-08 | 79 | 96% | 0.2w | 2023-11-08 | 2023-12-08 | 5.4w | 0d |  |  | 416h | 400h | 7,240 | 7,240 | 6,960 |
| 83 | 1.3.2.4.1 | **Student panel** |  | 15d | 2023-11-08 A | 2023-11-22 A | 79 | 100% |  | 2023-11-08 | 2023-11-22 | 15d |  |  |  | 240h | 240h | 4,200 | 4,200 | 4,200 |
| 84 | 1.3.2.4.1.1 | Future, history, current course view functionality |  | 4d | 2023-11-08 A | 2023-11-11 A | 79 | 100% |  | 2023-11-08 | 2023-11-11 | 4d |  | start no earlier than 2023-11-07 | Database Architect; Programmer | 64h | 64h | 1,120 | 1,120 | 1,120 |
| 85 | 1.3.2.4.1.2 | Booking meetings functionality |  | 3d | 2023-11-12 A | 2023-11-14 A | 84 | 100% |  | 2023-11-12 | 2023-11-14 | 3d |  | start no earlier than 2023-11-12 | Database Architect; Programmer | 48h | 48h | 840 | 840 | 840 |
| 86 | 1.3.2.4.1.3 | Search feature |  | 2d | 2023-11-15 A | 2023-11-16 A | 85 | 100% |  | 2023-11-15 | 2023-11-16 | 2d |  | start no earlier than 2023-11-07 | Database Architect; Programmer | 32h | 32h | 560 | 560 | 560 |
| 87 | 1.3.2.4.1.4 | Setting prerequisite |  | 1d | 2023-11-17 A | 2023-11-17 A | 86 | 100% |  | 2023-11-17 | 2023-11-17 | 1d |  | start no earlier than 2023-11-07 | Database Architect; Programmer | 16h | 16h | 280 | 280 | 280 |
| 88 | 1.3.2.4.1.5 | Academic advising sheet fill out |  | 2d | 2023-11-18 A | 2023-11-19 A | 87 | 100% |  | 2023-11-18 | 2023-11-19 | 2d |  | start no earlier than 2023-11-07 | Database Architect; Programmer | 32h | 32h | 560 | 560 | 560 |
| 89 | 1.3.2.4.1.6 | Messaging feature |  | 3d | 2023-11-20 A | 2023-11-22 A | 88 | 100% |  | 2023-11-20 | 2023-11-22 | 3d |  | finish no earlier than 2023-11-22 | Database Architect; Programmer | 48h | 48h | 840 | 840 | 840 |
| 90 | 1.3.2.4.2 | **Administrator panel** |  | 3d | 2023-11-23 A | 2023-11-25 | 83 | 67% | 1d | 2023-11-23 | 2023-11-25 | 3d |  |  |  | 32h | 16h | 520 | 520 | 240 |
| 91 | 1.3.2.4.2.1 | All admin properties |  | 2d | 2023-11-23 A | 2023-11-24 A | 83 | 100% |  | 2023-11-23 | 2023-11-24 | 2d |  | start no earlier than 2023-11-22 | Programmer | 16h | 16h | 240 | 240 | 240 |
| 92 | 1.3.2.4.2.2 | Reports generation |  | 1d | 2023-11-25 | 2023-11-25 | 91 |  |  | 2023-11-25 | 2023-11-25 | 1d | 9d |  | Database Architect; Programmer | 16h |  | 280 | 280 |  |
| 93 | 1.3.2.4.3 | **Tutor panel** |  | 6d | 2023-11-27 A | 2023-12-04 A | 90 | 100% |  | 2023-11-27 | 2023-12-04 | 6d |  |  |  | 96h | 96h | 1,680 | 1,680 | 1,680 |
| 94 | 1.3.2.4.3.1 | View, edit, and update student's information |  | 2d | 2023-11-27 A | 2023-11-28 A | 90 | 100% |  | 2023-11-27 | 2023-11-28 | 2d |  | start no earlier than 2023-11-21 | Database Architect; Programmer | 32h | 32h | 560 | 560 | 560 |
| 95 | 1.3.2.4.3.2 | Book meetings |  | 2d | 2023-11-29 A | 2023-11-30 A | 94 | 100% |  | 2023-11-29 | 2023-11-30 | 2d |  | start no earlier than 2023-11-21 | Database Architect; Programmer | 32h | 32h | 560 | 560 | 560 |
| 96 | 1.3.2.4.3.3 | Student's assignment list |  | 2d | 2023-12-01 A | 2023-12-04 A | 95 | 100% |  | 2023-12-01 | 2023-12-04 | 2d |  | start no earlier than 2023-11-21 | Database Architect; Programmer | 32h | 32h | 560 | 560 | 560 |
| 97 | 1.3.2.4.4 | **Manager panel** |  | 3d | 2023-12-05 A | 2023-12-07 A | 93 | 100% |  | 2023-12-05 | 2023-12-07 | 3d |  |  |  | 48h | 48h | 840 | 840 | 840 |
| 98 | 1.3.2.4.4.1 | CRUD operations on major, course, school data |  | 2d | 2023-12-05 A | 2023-12-06 A | 93 | 100% |  | 2023-12-05 | 2023-12-06 | 2d |  | finish no earlier than 2023-12-06 | Database Architect; Programmer | 32h | 32h | 560 | 560 | 560 |
| 99 | 1.3.2.4.4.2 | Student-Advisor assignment feature |  | 1d | 2023-12-07 A | 2023-12-07 A | 98 | 100% |  | 2023-12-07 | 2023-12-07 | 1d |  |  | Database Architect; Programmer | 16h | 16h | 280 | 280 | 280 |
| 100 | 1.3.2.4.5 | Finish Panels | milestone, manual | 0d | 2023-12-08 | 2023-12-08 | 99 |  |  | 2023-12-08 | 2023-12-08 | 0d |  |  |  |  |  |  |  |  |
| 101 | 1.3.2.5 | **Frontend Development** |  | 5d | 2023-12-08 | 2023-12-13 | 82 |  |  | 2023-12-08 | 2023-12-13 | 5d | 0d |  |  | 80h |  | 1,000 | 1,000 |  |
| 102 | 1.3.2.5.1 | Implement user interface based on design |  | 2d | 2023-12-08 | 2023-12-09 | 82 |  |  | 2023-12-08 | 2023-12-09 | 2d | 0d | start no earlier than 2023-11-28 | Designer; Programmer | 32h |  | 400 | 400 |  |
| 103 | 1.3.2.5.2 | Integrate with backend functionality |  | 2d | 2023-12-10 | 2023-12-11 | 102 |  |  | 2023-12-10 | 2023-12-11 | 2d | 0d | start no earlier than 2023-11-28 | Designer; Programmer | 32h |  | 400 | 400 |  |
| 104 | 1.3.2.5.3 | Ensure responsiveness and compatibility across browsers |  | 1d | 2023-12-12 | 2023-12-12 | 103 |  |  | 2023-12-12 | 2023-12-12 | 1d | 0d | start no earlier than 2023-12-01 | Designer; Programmer | 16h |  | 200 | 200 |  |
| 105 | 1.3.2.5.4 | Finish Frontend Development | milestone, manual | 0d | 2023-12-13 | 2023-12-13 | 104 |  |  | 2023-12-13 | 2023-12-13 | 0d |  |  | Designer; Programmer |  |  |  |  |  |

| ID | WBS | Task | Type | Duration | Start | Finish | Predecessors | Baseline start | Baseline finish | Baseline duration | Total slack | Constraint | Resources | Work | Cost | Baseline cost |
| --- | --- | --- | --- | --- | --- | --- | --- | --- | --- | --- | --- | --- | --- | --- | --- | --- |
| 106 | 1.4 | **Monitoring and Controlling** |  | 7d | 2023-12-13 | 2023-12-20 | 60 | 2023-12-13 | 2023-12-20 | 7d | 0d |  |  | 80h | 1,040 | 1,040 |
| 107 | 1.4.1 | **Unit Testing** |  | 3d | 2023-12-13 | 2023-12-15 | 60 | 2023-12-13 | 2023-12-15 | 3d | 0d |  | Tester | 48h | 480 | 480 |
| 108 | 1.4.1.1 | Test individual components and modules |  | 1d | 2023-12-13 | 2023-12-13 | 60 | 2023-12-13 | 2023-12-13 | 1d | 0d | start no earlier than 2023-12-10 | Tester | 8h | 80 | 80 |
| 109 | 1.4.1.2 | Verify functionality and identify bugs |  | 1d | 2023-12-14 | 2023-12-14 | 108 | 2023-12-14 | 2023-12-14 | 1d | 0d | start no earlier than 2023-12-09 | Tester | 8h | 80 | 80 |
| 110 | 1.4.1.3 | Perform code reviews and debugging |  | 1d | 2023-12-15 | 2023-12-15 | 109 | 2023-12-15 | 2023-12-15 | 1d | 0d | start no earlier than 2023-12-09 | Tester | 8h | 80 | 80 |
| 111 | 1.4.2 | Finish Testing | milestone, manual | 0d | 2023-12-16 | 2023-12-16 | 110 | 2023-12-16 | 2023-12-16 | 0d |  |  | Tester |  |  |  |
| 112 | 1.4.3 | Control quality |  | 1d | 2023-12-16 | 2023-12-16 | 110 | 2023-12-16 | 2023-12-16 | 1d | 0d | start no earlier than 2023-12-16 | Tester | 8h | 80 | 80 |
| 113 | 1.4.4 | Control communication |  | 1d | 2023-12-17 | 2023-12-17 | 112 | 2023-12-17 | 2023-12-17 | 1d | 0d |  | Project Manager | 8h | 160 | 160 |
| 114 | 1.4.5 | Control risks |  | 1d | 2023-12-18 | 2023-12-18 | 113 | 2023-12-18 | 2023-12-18 | 1d | 0d | start no earlier than 2023-12-14 | Project Manager | 8h | 160 | 160 |
| 115 | 1.4.6 | Control procurement |  | 1d | 2023-12-19 | 2023-12-19 | 114 | 2023-12-19 | 2023-12-19 | 1d | 0d | start no earlier than 2023-12-19 | Project Manager | 8h | 160 | 160 |
| 116 | 1.4.7 | Finish controlling | milestone, manual | 0d | 2023-12-20 | 2023-12-20 | 115 | 2023-12-20 | 2023-12-20 | 0d |  |  | Project Manager |  |  |  |
| 117 | 1.5 | **Closing** |  | 11d | 2023-12-20 | 2024-01-02 | 106 | 2023-12-20 | 2024-01-02 | 11d | 0d |  |  | 88h | 1,040 | 1,040 |
| 118 | 1.5.1 | Write thesis |  | 3d | 2023-12-20 | 2023-12-22 | 106 | 2023-12-20 | 2023-12-22 | 3d | 0d |  | Technical writer | 24h | 240 | 240 |
| 119 | 1.5.2 | Submit thesis | milestone | 0d | 2023-12-22 | 2023-12-22 | 118 | 2023-12-22 | 2023-12-22 | 0d | 0d |  | Project Manager; Technical writer |  |  |  |
| 120 | 1.5.3 | Design poster |  | 3d | 2023-12-23 | 2023-12-26 | 119 | 2023-12-23 | 2023-12-26 | 3d | 0d |  | Designer | 24h | 240 | 240 |
| 121 | 1.5.4 | Submit poster | milestone | 0d | 2023-12-26 | 2023-12-26 | 120 | 2023-12-26 | 2023-12-26 | 0d | 0d |  | Designer; Project Manager |  |  |  |
| 122 | 1.5.5 | Create user manuals and guides |  | 3d | 2023-12-27 | 2023-12-29 | 121 | 2023-12-27 | 2023-12-29 | 3d | 0d | start no earlier than 2023-12-27 | Technical writer | 24h | 240 | 240 |
| 123 | 1.5.6 | Review final project |  | 2d | 2024-01-01 | 2024-01-02 | 122 | 2024-01-01 | 2024-01-02 | 2d | 0d | start no earlier than 2023-12-29 | Project Manager | 16h | 320 | 320 |
| 124 | 1.5.7 | Submit final project | milestone | 0d | 2024-01-02 | 2024-01-02 | 123 | 2024-01-02 | 2024-01-02 | 0d | 0d |  | Project Manager |  |  |  |
